# Pfizer Continuum Project Plan

Schedule from MS Project, 2012-12-06 to 2014-02-14, A marks actual dates.

## Calendars

- Standard: Mon-Fri 08:00-12:00, 13:00-17:00; Sat-Sun off. Exceptions (off unless hours are given): 2013-11-28 to 2013-11-29 (Thanksgiving), 2013-12-25 (Christmas), 2014-01-01 (New Years).

## Resources

| Resource |
| --- |
| Bala |
| Smita |
| Nelli |
| Paula |
| Hugh |
| Steve Matyas |
| Todd |
| Steve L |
| Sohal |
| Harsha |
| Naveen |
| BDA Team |
| Systems Team |
| QA3 |
| QA4 |
| QA5 |
| Vrushali |
| Max |
| VCDE |
| Anu |
| rushali |
| CTEP |
| caXchange |
| C3PR |
| caAERS |
| PSC |
| LV |
| BDA |
| "C3PR |
| Documentation |
| caGrid |
| QA |
| BAM |
| Edmond |
| NCI |
| SAIC-F |
| Web Team |
| Bill Dyer |
| CCTS Team |
| John S |
| Patrick |
| Architects |
| Christo |
| John |
| Rhett |
| Nellie |
| Steve |
| Kalpesh |
| David L |
| Stevel L |
| Kumar C |
| Gia |
| Wendy |
| Raj |
| Steve M |
| Lauren |
| Systems |
| CTRO |
| Hannes |
| SMEs |
| Gisele |
| Joe |
| CTRP Dev team |
| CBIIT |
| All |
| Analysts |
| TBD |
| Charles |
| ESST |
| Developers |
| Lisa |
| Christophe |
| Krishna |
| QA1 |
| QA2 |
| David |
| Security |
| Arch |
| Tech Leads |
| Paula B |
| Kalpana |
| KK |
| Abe |
| Kim |
| Vijay |
| CAT |
| George |
| Larry |
| Michael O |
| Resource 1 |
| Resource 2 |
| Resource3 |
| Resource 4 |
| Resource 5 |
| Gisele S |
| Dianne R |
| HR |
| NA |
| SL |
| ScenPro |
| 5AM |
| TP |
| EM |
| KE |
| JM |
| DL |
| Paul |
| Michael |
| Eilis |
| Team |
| Dev team |
| Ram P |
| NIH 508 team |
| Bryan |
| Bill D |
| Marina |
| Ye |
| Rashmi |
| Ann Wiley |
| Henry |
| QA* |
| Systems* |
| Shine |
| System |
| be |
| Jill |
| Mike |
| GQR |
| GS |
| GPM |
| TPM |
| Sichen |
| JJ |
| Eric |

## Schedule

| ID | WBS | Task | Duration | Start | Finish | Predecessors | Complete | Remaining | Total slack | Constraint | Resources | Work | Actual work |
| --- | --- | --- | --- | --- | --- | --- | --- | --- | --- | --- | --- | --- | --- |
| 1 | 1 | **caIntegrator** | 298d? | 2012-12-06 A | 2014-01-31 |  | 96% | 12.09d? | 10d | start no earlier than 2012-12-03 |  | 6208h | 5948.8h |
| 2 | 1.1 | **caIntegrator 1.4.01 - patch release** | 15d | 2013-01-02 A | 2013-01-22 A |  | 100% |  |  |  |  | 120h | 120h |
| 3 | 1.1.1 | Appscan on QA | 6d | 2013-01-02 A | 2013-01-09 A |  | 100% |  |  | start no earlier than 2013-01-02 | Systems* | 48h | 48h |
| 4 | 1.1.2 | Appscan on Stage | 4d | 2013-01-10 A | 2013-01-15 A | 3 | 100% |  |  | start no earlier than 2012-12-05 | Systems* | 32h | 32h |
| 5 | 1.1.3 | QA reports and Approval | 2d | 2013-01-16 A | 2013-01-17 A | 4 | 100% |  |  |  | QA* | 16h | 16h |
| 6 | 1.1.4 | Prod Release | 3d | 2013-01-18 A | 2013-01-22 A | 5 | 100% |  |  |  | Systems* | 24h | 24h |
| 7 | 1.2 | **caIntegrator 1.4.1** | 211d? | 2012-12-06 A | 2013-09-26 A |  | 100% |  |  |  |  | 1720h | 1720h |
| 8 | 1.2.1 | MILESTONE: PROJECT KICKOFF | 1d | 2012-12-06 A | 2012-12-06 A |  | 100% |  |  | start no earlier than 2012-12-06 |  |  |  |
| 9 | 1.2.2 | EPLC Project Management Plan | 3d | 2013-01-02 A | 2013-01-04 A |  | 100% |  |  | start no earlier than 2013-01-02 | Shine | 24h | 24h |
| 10 | 1.2.3 | Github Access | 2d | 2013-01-07 A | 2013-01-08 A |  | 100% |  |  | start no earlier than 2013-01-07 |  |  |  |
| 11 | 1.2.4 | USCF JBOSS issues | 2d | 2013-01-07 A | 2013-01-08 A |  | 100% |  |  | start no earlier than 2013-01-07 | Abe | 16h | 16h |
| 12 | 1.2.5 | UCSF Support (Role Based Permission) | 1d | 2013-01-25 A | 2013-01-25 A | 11 | 100% |  |  |  | Abe | 8h | 8h |
| 13 | 1.2.6 | **OSDI / Build Changes** | 19d? | 2013-01-09 A | 2013-02-04 A | 12 | 100% |  |  |  | Abe | 208h | 208h |
| 14 | 1.2.6.1 | Local copy to github, split s/w and documentation, license/copyright | 3d? | 2013-01-09 A | 2013-01-11 A |  | 100% |  |  | start no earlier than 2013-01-09 | Abe | 24h | 24h |
| 15 | 1.2.6.2 | Code Changes | 4d | 2013-01-22 A | 2013-01-25 A |  | 100% |  |  | start no earlier than 2013-01-22 | Abe | 32h | 32h |
| 16 | 1.2.6.3 | OSDI Phase 1 - complete (Pending AntHill Pro Deployment) | 6d | 2013-01-28 A | 2013-02-04 A | 15 | 100% |  |  |  | Abe | 48h | 48h |
| 17 | 1.2.7 | 508 Compliance on Dev (100%) | 3d | 2013-02-05 A | 2013-02-07 A | 13 | 100% |  |  |  | Abe | 24h | 24h |
| 18 | 1.2.8 | UCSF Support | 2d | 2013-02-08 A | 2013-02-11 A | 17 | 100% |  |  |  | Abe | 16h | 16h |
| 19 | 1.2.9 | Fix Appscan Issues | 10d | 2013-02-08 A | 2013-02-21 A | 18 | 100% |  |  |  | Abe | 80h | 80h |
| 20 | 1.2.10 | 508 compliance work | 4d | 2013-02-22 A | 2013-02-27 A | 19 | 100% |  |  |  | Abe | 32h | 32h |
| 21 | 1.2.11 | caBIO replacement changes | 20d | 2013-02-28 A | 2013-03-27 A | 20 | 100% |  |  |  | Abe | 160h | 160h |
| 22 | 1.2.12 | Documentation Changes (Context Sensitive links) | 2d | 2013-03-28 A | 2013-03-29 A | 21 | 100% |  |  |  | Abe | 16h | 16h |
| 23 | 1.2.13 | caBIO changes - for pathway search | 5d | 2013-04-01 A | 2013-04-05 A | 22 | 100% |  |  |  | Abe | 40h | 40h |
| 24 | 1.2.14 | Bug fixes and other improvements | 10d | 2013-04-01 A | 2013-04-12 A | 23 | 100% |  |  |  | Abe | 80h | 80h |
| 25 | 1.2.15 | AntHill Pro setup | 2d | 2013-04-15 A | 2013-04-16 A | 24 | 100% |  |  |  | System | 16h | 16h |
| 26 | 1.2.16 | 508 Compliance Test | 4d | 2013-02-22 A | 2013-04-17 A | 25 | 100% |  |  |  | Abe | 32h | 32h |
| 27 | 1.2.17 | Final test and Deployment on Dev (Anthill Pro) | 4d | 2013-04-03 A | 2013-04-09 A | 26 | 100% |  |  |  | Abe | 32h | 32h |
| 28 | 1.2.18 | Appscan on Dev | 6d | 2013-04-15 A | 2013-04-22 A | 24 | 100% |  |  | start no earlier than 2013-02-15 | System | 48h | 48h |
| 29 | 1.2.19 | Tag for QA | 2d | 2013-04-23 A | 2013-04-24 A | 28 | 100% |  |  |  | Abe | 16h | 16h |
| 30 | 1.2.20 | Documentation Changes | 3d | 2013-04-25 A | 2013-04-29 A | 29 | 100% |  |  |  | Jill | 24h | 24h |
| 31 | 1.2.21 | Wait for QA Team Availability | 10d | 2013-04-30 A | 2013-05-13 A | 30 | 100% |  |  |  |  |  |  |

| ID | WBS | Task | Type | Duration | Start | Finish | Predecessors | Complete | Constraint | Resources | Work | Actual work |
| --- | --- | --- | --- | --- | --- | --- | --- | --- | --- | --- | --- | --- |
| 32 | 1.2.22 | **QA Tier** |  | 90d? | 2013-05-14 A | 2013-09-16 A | 31 | 100% |  |  | 744h | 744h |
| 33 | 1.2.22.1 | Regression Testing on QA tier |  | 20d | 2013-05-14 A | 2013-06-10 A |  | 100% |  | QA* | 160h | 160h |
| 34 | 1.2.22.2 | Installer Testing |  | 4d | 2013-06-11 A | 2013-06-14 A | 33 | 100% |  | QA* | 32h | 32h |
| 35 | 1.2.22.3 | Section 508 testing on QA tier |  | 2d | 2013-06-17 A | 2013-06-18 A | 34 | 100% |  | QA* | 16h | 16h |
| 36 | 1.2.22.4 | Appscan on QA tier |  | 5d | 2013-06-17 A | 2013-06-21 A | 34 | 100% |  | Systems* | 40h | 40h |
| 37 | 1.2.22.5 | **Struts patch** |  | 38d? | 2013-07-18 A | 2013-09-09 A | 36 | 100% |  |  | 432h | 432h |
| 38 | 1.2.22.5.1 | Upgrade to Struts 2.3.15.1 and fix anything that breaks |  | 2d | 2013-07-18 A | 2013-07-19 A |  | 100% | start no earlier than 2013-07-18 | Abe | 16h | 16h |
| 39 | 1.2.22.5.2 | Obtain permission to deploy to QA Tier | milestone | 0d | 2013-07-19 A | 2013-07-19 A | 38 | 100% |  | Mike |  |  |
| 40 | 1.2.22.5.3 | Deploy to the QA Tier |  | 1d? | 2013-07-22 A | 2013-07-22 A | 39 | 100% |  | Marina | 8h | 8h |
| 41 | 1.2.22.5.4 | Smoke test |  | 3d | 2013-07-31 A | 2013-08-02 A | 40 | 100% | start no earlier than 2013-07-31 | Marina | 24h | 24h |
| 42 | 1.2.22.5.5 | Run Section 508 scan and manage issues |  | 1d? | 2013-07-26 A | 2013-07-26 A | 41 | 100% |  | Mike | 8h | 8h |
| 43 | 1.2.22.5.6 | Run security appscan |  | 6d | 2013-08-23 A | 2013-08-30 A | 44, 45 | 100% |  | Systems | 48h | 48h |
| 44 | 1.2.22.5.7 | Test local install |  | 4d | 2013-08-05 A | 2013-08-08 A | 41 | 100% |  | Marina | 32h | 32h |
| 45 | 1.2.22.5.8 | Test local upgrade |  | 10d | 2013-08-09 A | 2013-08-22 A | 44 | 100% |  | Marina | 80h | 80h |
| 46 | 1.2.22.5.9 | **Resolve issues identified by QA** |  | 23d? | 2013-08-05 A | 2013-09-04 A |  | 100% |  |  | 192h | 192h |
| 47 | 1.2.22.5.9.1 | Fix CAINT-1290, CAINT-1327, CAINT-1328, CAINT-1329, CAINT-1331, CAINT-1332 |  | 20d | 2013-08-05 A | 2013-08-30 A | 41 | 100% |  | Abe | 160h | 160h |
| 48 | 1.2.22.5.9.2 | Smoke test the fixes |  | 3d | 2013-09-02 A | 2013-09-04 A | 47 | 100% |  | Marina | 24h | 24h |
| 49 | 1.2.22.5.9.3 | Re-run Section 508 Scan |  | 1d? | 2013-09-02 A | 2013-09-02 A | 47 | 100% |  | Shine | 8h | 8h |
| 50 | 1.2.22.5.10 | Create the Test Plan for STAGE and update the test report for QA |  | 3d | 2013-09-05 A | 2013-09-09 A | 41, 42, 43, 44, 46 | 100% |  | Marina | 24h | 24h |
| 51 | 1.2.22.6 | Request approval to deploy to STAGE | milestone | 0d | 2013-09-09 A | 2013-09-09 A | 37 | 100% |  | Marina |  |  |
| 52 | 1.2.22.7 | Test Results Review and Reporting |  | 3d | 2013-09-10 A | 2013-09-12 A | 51 | 100% |  | QA* | 24h | 24h |
| 53 | 1.2.22.8 | Approval to deploy to STAGE | milestone | 0d | 2013-09-12 A | 2013-09-12 A | 52 | 100% |  | QA* |  |  |
| 54 | 1.2.22.9 | Create release artifacts |  | 2d | 2013-09-13 A | 2013-09-16 A | 53 | 100% |  | Mike; Abe | 32h | 32h |
| 55 | 1.2.22.10 | Update installation documentation |  | 0.5d? | 2013-08-23 A | 2013-08-23 A | 44, 45 | 100% |  | Abe; Jill | 8h | 8h |

| ID | WBS | Task | Type | Duration | Start | Finish | Predecessors | Complete | Remaining | Total slack | Constraint | Resources | Work | Actual work |
| --- | --- | --- | --- | --- | --- | --- | --- | --- | --- | --- | --- | --- | --- | --- |
| 56 | 1.2.23 | **STAGE Tier** |  | 7d | 2013-09-12 A | 2013-09-23 A |  | 100% |  |  |  |  | 80h | 80h |
| 57 | 1.2.23.1 | Request deployment to STAGE | milestone | 0d | 2013-09-12 A | 2013-09-12 A | 53 | 100% |  |  |  | Sichen |  |  |
| 58 | 1.2.23.2 | Deploy to STAGE |  | 2d | 2013-09-13 A | 2013-09-16 A | 57 | 100% |  |  |  | Systems* | 16h | 16h |
| 59 | 1.2.23.3 | Smoke test |  | 2d | 2013-09-17 A | 2013-09-18 A | 58 | 100% |  |  |  | Marina | 16h | 16h |
| 60 | 1.2.23.4 | Create QA Test Summary Report |  | 3d | 2013-09-19 A | 2013-09-23 A | 59 | 100% |  |  |  | Marina | 24h | 24h |
| 61 | 1.2.23.5 | Test Results Review and Reporting |  | 3d | 2013-09-19 A | 2013-09-23 A | 59 | 100% |  |  |  | QA* | 24h | 24h |
| 62 | 1.2.24 | **PRODUCTION** |  | 3d | 2013-09-23 A | 2013-09-26 A |  | 100% |  |  |  |  | 24h | 24h |
| 63 | 1.2.24.1 | Request deployment to PRODUCTION | milestone | 0d | 2013-09-23 A | 2013-09-23 A | 61 | 100% |  |  |  | GQR |  |  |
| 64 | 1.2.24.2 | Deploy to PRODUCTION |  | 1d | 2013-09-24 A | 2013-09-24 A | 63 | 100% |  |  |  | Systems* | 8h | 8h |
| 65 | 1.2.24.3 | Update product landing page |  | 0.5d | 2013-09-25 A | 2013-09-25 A | 64 | 100% |  |  |  |  |  |  |
| 66 | 1.2.24.4 | QA smoke tests PRODUCTION |  | 2d | 2013-09-25 A | 2013-09-26 A | 64 | 100% |  |  |  | QA* | 16h | 16h |
| 67 | 1.2.25 | MILESTONE: RELEASE 1.4.1 | milestone | 0d | 2013-09-26 A | 2013-09-26 A | 62 | 100% |  |  | start no earlier than 2012-01-09 |  |  |  |
| 68 | 1.3 | **caIntegrator 1.4.2** |  | 199d? | 2013-04-24 A | 2014-01-31 |  | 94% | 11.37d? | 10d |  |  | 4368h | 4108.8h |
| 69 | 1.3.1 | Support for 1.4.1 |  | 5d | 2013-04-25 A | 2013-05-01 A | 29 | 100% |  |  |  | Abe | 40h | 40h |
| 70 | 1.3.2 | **Development** |  | 155d? | 2013-04-24 A | 2013-11-26 A |  | 100% |  |  |  |  | 3936h | 3936h |
| 71 | 1.3.2.1 | **Iteration 0** |  | 10d | 2013-04-24 A | 2013-05-07 A |  | 100% |  |  |  |  | 240h | 240h |
| 72 | 1.3.2.1.1 | CAINT-1279: Improve Memory Usage of study deployments |  | 10d | 2013-04-24 A | 2013-05-07 A |  | 100% |  |  | start no earlier than 2013-04-24 | Abe | 80h | 80h |
| 73 | 1.3.2.1.2 | CAINT-1280: Work with Jill to update the Gene search documentation |  | 10d | 2013-04-24 A | 2013-05-07 A |  | 100% |  |  | start no earlier than 2013-04-24 | Abe | 80h | 80h |
| 74 | 1.3.2.1.3 | CAINT-1281: Fix QA's UPT |  | 10d | 2013-04-24 A | 2013-05-07 A |  | 100% |  |  | start no earlier than 2013-04-24 | Abe | 80h | 80h |
| 75 | 1.3.2.2 | **Iteration 1** |  | 10d | 2013-06-05 A | 2013-06-18 A |  | 100% |  |  |  |  | 400h | 400h |
| 76 | 1.3.2.2.1 | CAINT-63: Performance issues with multiple users during study deletion |  | 10d | 2013-06-05 A | 2013-06-18 A |  | 100% |  |  |  | Abe | 80h | 80h |
| 77 | 1.3.2.2.2 | CAINT-73: Large Clinical Data files take too long between annotation definition assignment |  | 10d | 2013-06-05 A | 2013-06-18 A |  | 100% |  |  |  | Abe | 80h | 80h |
| 78 | 1.3.2.2.3 | CAINT-1221: Remove usage of struts dojo javascript from application |  | 10d | 2013-06-05 A | 2013-06-18 A |  | 100% |  |  |  | Abe | 80h | 80h |
| 79 | 1.3.2.2.4 | CAINT-1235: Perform performance analysis of system with the large data set |  | 10d | 2013-06-05 A | 2013-06-18 A |  | 100% |  |  |  | Abe | 80h | 80h |
| 80 | 1.3.2.2.5 | CAINT-1301: Upgrade to EhCache 2.6.6 |  | 10d | 2013-06-05 A | 2013-06-18 A |  | 100% |  |  |  | Abe | 80h | 80h |

| ID | WBS | Task | Duration | Start | Finish | Predecessors | Complete | Resources | Work | Actual work |
| --- | --- | --- | --- | --- | --- | --- | --- | --- | --- | --- |
| 81 | 1.3.2.3 | **Iteration 2** | 10d | 2013-06-19 A | 2013-07-02 A | 75 | 100% |  | 400h | 400h |
| 82 | 1.3.2.3.1 | CAINT-1246: Upgrading using the linux command line upgrade.properties file fails with invalid database type | 10d | 2013-06-19 A | 2013-07-02 A |  | 100% | Abe | 80h | 80h |
| 83 | 1.3.2.3.2 | CAINT-1300: Acquire and set up a new CI Server | 10d | 2013-06-19 A | 2013-07-02 A |  | 100% | Abe | 80h | 80h |
| 84 | 1.3.2.3.3 | CAINT-1307: Track down current NCI tech stack to determine upgrade path | 10d | 2013-06-19 A | 2013-07-02 A |  | 100% | Abe | 80h | 80h |
| 85 | 1.3.2.3.4 | CAINT-1309: Gather performance numbers for application post performance updates | 10d | 2013-06-19 A | 2013-07-02 A |  | 100% | Abe | 80h | 80h |
| 86 | 1.3.2.3.5 | CAINT-1312: Remove tutorial videos from the application | 10d | 2013-06-19 A | 2013-07-02 A |  | 100% | Abe | 80h | 80h |
| 87 | 1.3.2.4 | **Iteration 3** | 10d | 2013-07-03 A | 2013-07-16 A | 81 | 100% |  | 480h | 480h |
| 88 | 1.3.2.4.1 | CAINT-1242: Upgrade to latest version of the Spring Framework | 10d | 2013-07-03 A | 2013-07-16 A |  | 100% | Abe | 80h | 80h |
| 89 | 1.3.2.4.2 | CAINT-1313: Fix broken Integration tests | 10d | 2013-07-03 A | 2013-07-16 A |  | 100% | Abe | 80h | 80h |
| 90 | 1.3.2.4.3 | CAINT-1314: Create Tech Stack Wiki Page for application | 10d | 2013-07-03 A | 2013-07-16 A |  | 100% | Abe | 80h | 80h |
| 91 | 1.3.2.4.4 | CAINT-1315: Agregate Performance Numbers and add to wiki | 10d | 2013-07-03 A | 2013-07-16 A |  | 100% | Abe | 80h | 80h |
| 92 | 1.3.2.4.5 | CAINT-1316: Unable to deploy Affymetrix copy number platform | 10d | 2013-07-03 A | 2013-07-16 A |  | 100% | Abe | 80h | 80h |
| 93 | 1.3.2.4.6 | CAINT-1317: Deployment of copy number study results in duplicate samples | 10d | 2013-07-03 A | 2013-07-16 A |  | 100% | Abe | 80h | 80h |
| 94 | 1.3.2.5 | **Iteration 4** | 10d | 2013-07-17 A | 2013-07-30 A | 87 | 100% |  | 400h | 400h |
| 95 | 1.3.2.5.1 | CAINT-1319: Upgraded to latest Struts Version | 10d | 2013-07-17 A | 2013-07-30 A |  | 100% | Abe | 80h | 80h |
| 96 | 1.3.2.5.2 | CAINT-1320: Upgraded from Tiles 2.2.x to Tiles 3.x | 10d | 2013-07-17 A | 2013-07-30 A |  | 100% | Abe | 80h | 80h |
| 97 | 1.3.2.5.3 | CAINT-1321: Determine cause of performance drop for Agilent Data Set | 10d | 2013-07-17 A | 2013-07-30 A |  | 100% | Abe | 80h | 80h |
| 98 | 1.3.2.5.4 | CAINT-1324: HTTP Status 404 error when hit login link on the Register page | 10d | 2013-07-17 A | 2013-07-30 A |  | 100% | Abe | 80h | 80h |
| 99 | 1.3.2.5.5 | CAINT-1325: Unable to add authorization groups via the UI | 10d | 2013-07-17 A | 2013-07-30 A |  | 100% | Abe | 80h | 80h |
| 100 | 1.3.2.6 | **Iteration 5** | 10d | 2013-07-31 A | 2013-08-13 A | 94 | 100% |  | 400h | 400h |
| 101 | 1.3.2.6.1 | CAINT-1216: Re-Enable study authorization in Integration tests | 10d | 2013-07-31 A | 2013-08-13 A |  | 100% | Abe | 80h | 80h |
| 102 | 1.3.2.6.2 | CAINT-1274: Take a closer look at the NCIA Integration Tests | 10d | 2013-07-31 A | 2013-08-13 A |  | 100% | Abe | 80h | 80h |
| 103 | 1.3.2.6.3 | CAINT-1318: Re-enable testRunGistic in GenePatternGrinRunnerImplTestIntegration once cause of failure has been determined and fixed | 10d | 2013-07-31 A | 2013-08-13 A |  | 100% | Abe | 80h | 80h |
| 104 | 1.3.2.6.4 | CAINT-1327: Copy and Disable study functions are not working | 10d | 2013-07-31 A | 2013-08-13 A |  | 100% | Abe | 80h | 80h |
| 105 | 1.3.2.6.5 | CAINT-1328: Endless processing study status if deploy copy number study using caDnaCopy Service: http://ncias-d227-v.nci.nih.gov:8080/wsrf/services/cagrid/CaDNAcopy | 10d | 2013-07-31 A | 2013-08-13 A |  | 100% | Abe | 80h | 80h |

| ID | WBS | Task | Type | Duration | Start | Finish | Predecessors | Complete | Constraint | Resources | Work | Actual work |
| --- | --- | --- | --- | --- | --- | --- | --- | --- | --- | --- | --- | --- |
| 106 | 1.3.2.7 | **Iteration 6** |  | 10d | 2013-08-14 A | 2013-08-27 A | 100 | 100% |  |  | 320h | 320h |
| 107 | 1.3.2.7.1 | CAINT-1290: Endless Processing status when creating Mapping500K.na30 platform with Mapping250K_Nsp and Mapping250K_Sty designs on the local copy |  | 10d | 2013-08-14 A | 2013-08-27 A |  | 100% |  | Abe | 80h | 80h |
| 108 | 1.3.2.7.2 | CAINT-1329: Local installation under Windows 7 using GUI failed due to error: C:\Program Files\caintegrator\Uninstaller\uninstaller.jar (The system can't find the path specified) |  | 10d | 2013-08-14 A | 2013-08-27 A |  | 100% |  | Abe | 80h | 80h |
| 109 | 1.3.2.7.3 | CAINT-1331: Copy and Disable study functions are not working on the local copy of the caIntegrator |  | 10d | 2013-08-14 A | 2013-08-27 A |  | 100% |  | Abe | 80h | 80h |
| 110 | 1.3.2.7.4 | CAINT-1332: Windows GUI install fails due to circular property reference |  | 10d | 2013-08-14 A | 2013-08-27 A |  | 100% |  | Abe | 80h | 80h |
| 111 | 1.3.2.8 | **Iteration 7** |  | 10d | 2013-08-28 A | 2013-09-10 A | 106 | 100% |  |  | 240h | 240h |
| 112 | 1.3.2.8.1 | CAINT-1153: reduce CI build time |  | 10d | 2013-08-28 A | 2013-09-10 A |  | 100% |  | Abe | 80h | 80h |
| 113 | 1.3.2.8.2 | CAINT-1218: Improve performance of the Integration tests |  | 10d | 2013-08-28 A | 2013-09-10 A |  | 100% |  | Abe | 80h | 80h |
| 114 | 1.3.2.8.3 | CAINT-1330: Bioconductor server can only handle 2 simultaneous calls at once |  | 10d | 2013-08-28 A | 2013-09-10 A |  | 100% |  | Abe | 80h | 80h |
| 115 | 1.3.2.9 | **Iteration 8** |  | 10d? | 2013-09-11 A | 2013-09-24 A | 111 | 100% |  |  | 488h | 488h |
| 116 | 1.3.2.9.1 | CAINT-1290: Endless Processing status when creating Mapping500K.na30 platform with Mapping250K_Nsp and Mapping250K_Sty designs on the local copy |  | 10d | 2013-09-11 A | 2013-09-24 A |  | 100% |  | Abe | 80h | 80h |
| 117 | 1.3.2.9.2 | CAINT-1299: GUI Upgrader v1.4.1 doesn't upgrade the application version/build number |  | 10d | 2013-09-11 A | 2013-09-24 A |  | 100% |  | Abe | 80h | 80h |
| 118 | 1.3.2.9.3 | CAINT-1304: When install caIntegrator locally and open the application for the first time, - user see the red message: You are seeing this page because your session has timed out |  | 10d | 2013-09-11 A | 2013-09-24 A |  | 100% |  | Abe | 80h | 80h |
| 119 | 1.3.2.9.4 | CAINT-1306: Upgrade caIntegrator by using command line on window failed |  | 10d | 2013-09-11 A | 2013-09-24 A |  | 100% |  | Abe | 80h | 80h |
| 120 | 1.3.2.9.5 | CAINT-1326: When open freshly deployed application on QA, will see the message : You are seeing this page because your session has timed out |  | 10d | 2013-09-11 A | 2013-09-24 A |  | 100% |  | Abe | 80h | 80h |
| 121 | 1.3.2.9.6 | CAINT-1331: Copy and Disable study functions are not working on the local copy of the caIntegrator |  | 10d | 2013-09-11 A | 2013-09-24 A |  | 100% |  | Abe | 80h | 80h |
| 122 | 1.3.2.9.7 | CAINT-1333: Update page footer |  | 1d? | 2013-09-11 A | 2013-09-11 A |  | 100% |  | Abe | 8h | 8h |
| 123 | 1.3.2.10 | **RC 1** |  | 13d | 2013-09-25 A | 2013-10-11 A | 115 | 100% |  |  | 416h | 416h |
| 124 | 1.3.2.10.1 | CAINT-1293: If user have a number of saved gene lists - it is not possible to see all of them properly in FF and IE |  | 13d | 2013-09-25 A | 2013-10-11 A |  | 100% |  | Abe | 104h | 104h |
| 125 | 1.3.2.10.2 | CAINT-1305: If install locally with SSO option and try logout from caIntegrator user may see the connection problem |  | 13d | 2013-09-25 A | 2013-10-11 A |  | 100% |  | Abe | 104h | 104h |
| 126 | 1.3.2.10.3 | CAINT-1328: Endless processing study status if deploy copy number study using caDnaCopy Service: http://ncias-d227-v.nci.nih.gov:8080/wsrf/services/cagrid/CaDNAcopy |  | 13d | 2013-09-25 A | 2013-10-11 A |  | 100% |  | Abe | 104h | 104h |
| 127 | 1.3.2.10.4 | CAINT-1334: Non consistent error: Unauthorized access during study creation |  | 13d | 2013-09-25 A | 2013-10-11 A |  | 100% |  | Abe | 104h | 104h |
| 128 | 1.3.2.11 | Cut release candidate | milestone | 0d | 2013-10-11 A | 2013-10-11 A | 123 | 100% |  | Abe |  |  |
| 129 | 1.3.2.12 | HOLD - Government Shutdown |  | 13d | 2013-10-01 A | 2013-10-17 A |  | 100% | finish no earlier than 2013-10-17 |  |  |  |
| 130 | 1.3.2.13 | Create test plan |  | 10d | 2013-10-18 A | 2013-10-31 A | 129 | 100% |  | Marina | 80h | 80h |
| 131 | 1.3.2.14 | Request approval to deploy to QA | milestone | 0d | 2013-10-31 A | 2013-10-31 A | 130 | 100% |  | Mike |  |  |
| 132 | 1.3.2.15 | DEV test results and QA Test Plan review |  | 3d | 2013-11-01 A | 2013-11-05 A | 131 | 100% |  | QA* | 24h | 24h |
| 133 | 1.3.2.16 | Approval to deploy to QA | milestone | 0d | 2013-11-05 A | 2013-11-05 A | 132 | 100% |  | GQR |  |  |
| 134 | 1.3.2.17 | RC 2 |  | 6d | 2013-11-19 A | 2013-11-26 A |  | 100% | start no earlier than 2013-11-19 | Eric | 48h | 48h |

| ID | WBS | Task | Type | Duration | Start | Finish | Predecessors | Complete | Remaining | Total slack | Constraint | Resources | Work | Actual work |
| --- | --- | --- | --- | --- | --- | --- | --- | --- | --- | --- | --- | --- | --- | --- |
| 135 | 1.3.3 | **QA Tier** |  | 23d | 2013-11-27 A | 2014-01-02 |  | 66% | 7.73d | 31d |  |  | 216h | 132.8h |
| 136 | 1.3.3.1 | Deploy to QA tier |  | 1d | 2013-11-27 A | 2013-11-27 A | 134 | 100% |  |  |  | Systems* | 8h | 8h |
| 137 | 1.3.3.2 | RC2 Performance Testing (occurs on DEV Tier) |  | 2d | 2013-12-03 A | 2013-12-04 A |  | 100% |  |  | finish no earlier than 2012-12-04 | Eric | 16h | 16h |
| 138 | 1.3.3.3 | Regression Testing on QA tier |  | 5d | 2013-12-02 A | 2013-12-06 A | 136 | 100% |  |  |  | Marina | 40h | 40h |
| 139 | 1.3.3.4 | Installer Testing |  | 4d | 2013-12-09 A | 2013-12-12 | 138 | 90% | 0.4d | 44d |  | Marina | 32h | 28.8h |
| 140 | 1.3.3.5 | Section 508 testing on QA tier | milestone | 0d | 2013-12-13 A | 2013-12-13 A | 139 | 100% |  |  |  | Marina |  |  |
| 141 | 1.3.3.6 | Appscan on QA tier |  | 5d | 2013-12-13 A | 2013-12-19 A | 139 | 100% |  |  |  | Systems* | 40h | 40h |
| 142 | 1.3.3.7 | Create QA Test Summary Report |  | 3d | 2013-12-20 | 2013-12-24 | 141 |  |  | 0d |  | Marina | 24h |  |
| 143 | 1.3.3.8 | Request approval to deploy to STAGE | milestone | 0d | 2013-12-24 | 2013-12-24 | 142 |  |  | 0d |  | Marina |  |  |
| 144 | 1.3.3.9 | QA Test Report Review |  | 3d | 2013-12-26 | 2013-12-30 | 143 |  |  | 0d |  | QA* | 24h |  |
| 145 | 1.3.3.10 | Approval to deploy to STAGE | milestone | 0d | 2013-12-30 | 2013-12-30 | 144 |  |  | 0d |  | QA* |  |  |
| 146 | 1.3.3.11 | Create release artifacts |  | 2d | 2013-12-31 | 2014-01-02 | 145 |  |  | 31d |  | Eric; Todd | 32h |  |
| 147 | 1.3.4 | **STAGE Tier** |  | 18d | 2013-12-30 | 2014-01-24 |  |  |  | 0d |  |  | 136h |  |
| 148 | 1.3.4.1 | Request deployment to STAGE | milestone | 0d | 2013-12-30 | 2013-12-30 | 145 |  |  | 0d |  | JJ |  |  |
| 149 | 1.3.4.2 | Deploy to STAGE |  | 3d | 2013-12-31 | 2014-01-03 | 148 |  |  | 0d |  | Systems* | 24h |  |
| 150 | 1.3.4.3 | Smoke test |  | 3d | 2014-01-06 | 2014-01-08 | 149 |  |  | 0d |  | Marina | 24h |  |
| 151 | 1.3.4.4 | Request security appscan | milestone | 0d | 2014-01-08 | 2014-01-08 | 150 |  |  | 27d |  | Marina; Todd |  |  |
| 152 | 1.3.4.5 | Verify TRANSCEND Document Feedback |  | 1d | 2014-01-09 | 2014-01-09 | 150 |  |  | 0d |  |  |  |  |
| 153 | 1.3.4.6 | Run security appscan |  | 5d | 2014-01-10 | 2014-01-16 | 152 |  |  | 0d |  | Systems* | 40h |  |
| 154 | 1.3.4.7 | Create QA Test Summary Report |  | 3d | 2014-01-17 | 2014-01-21 | 153 |  |  | 0d |  | Marina | 24h |  |
| 155 | 1.3.4.8 | Request approval to deploy to PROD | milestone | 0d | 2014-01-21 | 2014-01-21 | 154 |  |  | 0d |  | Marina |  |  |
| 156 | 1.3.4.9 | Test Results Review and Reporting |  | 3d | 2014-01-22 | 2014-01-24 | 150, 155 |  |  | 0d |  | QA* | 24h |  |
| 157 | 1.3.4.10 | Approval to deploy to PROD | milestone | 0d | 2014-01-24 | 2014-01-24 | 156 |  |  | 0d |  | GQR |  |  |
| 158 | 1.3.5 | **PRODUCTION** |  | 5d? | 2014-01-27 | 2014-01-31 |  |  |  | 0d |  |  | 40h |  |
| 159 | 1.3.5.1 | Request deployment to PRODUCTION |  | 1d? | 2014-01-27 | 2014-01-27 | 157 |  |  | 0d |  | GQR | 8h |  |
| 160 | 1.3.5.2 | Deploy to PRODUCTION |  | 3d | 2014-01-28 | 2014-01-30 | 159 |  |  | 0d |  | Systems* | 24h |  |
| 161 | 1.3.5.3 | Update product landing page |  | 0.5d | 2014-01-31 | 2014-01-31 | 160 |  |  | 0.5d |  |  |  |  |
| 162 | 1.3.5.4 | QA smoke tests PRODUCTION |  | 1d | 2014-01-31 | 2014-01-31 | 160 |  |  | 0d |  | QA* | 8h |  |
| 163 | 1.3.6 | MILESTONE: RELEASE 1.4.2 | milestone | 0d | 2014-01-31 | 2014-01-31 | 158 |  |  | 0d | start no earlier than 2012-01-09 |  |  |  |

| ID | WBS | Task | Duration | Start | Finish | Predecessors | Total slack | Resources | Work |
| --- | --- | --- | --- | --- | --- | --- | --- | --- | --- |
| 164 | 2 | **User Support (as needed)** | 274d | 2013-01-23 | 2014-02-14 |  | 0d |  | 2504h |
| 165 | 2.1 | Support 1.4.0.1 | 223d | 2013-01-23 | 2013-12-03 | 6 | 51d | Eric | 1784h |
| 166 | 2.2 | Support 1.4.1 | 80d | 2013-09-27 | 2014-01-22 | 67 | 17d | Eric | 640h |
| 167 | 2.3 | Support 1.4.2 | 10d | 2014-02-03 | 2014-02-14 | 163 | 0d | Eric | 80h |
